# Visualización ampliada de edificios

How a schedule from ProjectLibre changed from version to version. A marks actual dates.

## Version 1 (saved 2017-05-05)

Note of the change: Reorganizar proyecto

| ID | WBS | Task | Duration | Start | Finish | Predecessors | Total float | Constraint |
| --- | --- | --- | --- | --- | --- | --- | --- | --- |
| 1 | 1 | **Proyecto** | 89.58d? | 2016-12-06 | 2017-07-06 |  |  |  |
| 2 | 1.1 | **Gestión del proyecto** | 5.42d? | 2016-12-06 | 2016-12-18 |  | 2600d |  |
| 3 |  | Gestión del alcance | 1.33d? | 2016-12-06 | 2016-12-08 |  | 2600d |  |
| 4 |  | Eleccion ciclo de vida | 0.08d? | 2016-12-08 | 2016-12-08 | 3 | 2600d |  |
| 5 |  | Gestión del tiempo | 1d? | 2016-12-08 | 2016-12-11 | 4 | 2600d |  |
| 6 |  | Gestión de los costes | 1d? | 2016-12-11 | 2016-12-13 | 5 | 2600d |  |
| 7 |  | Gestión de la configuración | 1d? | 2016-12-13 | 2016-12-15 | 6 | 2600d |  |
| 8 |  | Gestion de riesgos | 1d? | 2016-12-15 | 2016-12-18 | 7 | 2600d |  |
| 9 | 1.2 | **Análisis del sistema y requisitos** | 5d? | 2016-12-11 | 2016-12-22 | 5 | 2600d |  |
| 10 |  | Análisis de requisitos | 2.67d? | 2016-12-11 | 2016-12-18 |  | 2911.11d |  |
| 11 |  | Especificación requisitos | 1d? | 2016-12-18 | 2016-12-20 | 8 | 2600d |  |
| 12 |  | Casos de uso | 1d? | 2016-12-20 | 2016-12-22 | 11 | 2600d |  |
| 13 | 1.3 | **Incremento1: Análisis de tecnologías** | 7.67d? | 2016-12-22 | 2017-01-10 | 9 | 2600d |  |
| 14 |  | Estudio de tecnologías disponibles | 1.33d? | 2016-12-22 | 2016-12-25 |  | 2600d |  |
| 15 | 1.3.2 | **Pruebas** | 6d? | 2016-12-25 | 2017-01-08 | 14 | 2600d |  |
| 16 |  | IMU | 2d? | 2016-12-25 | 2017-01-01 |  | 2600d |  |
| 17 |  | ARToolkit Sdk | 2d? | 2017-01-01 | 2017-01-03 | 16 | 2600d |  |
| 18 |  | Vuforia Sdk | 2d? | 2017-01-05 | 2017-01-08 | 17 | 2600d |  |
| 19 |  | Elección de tecnología | 0.33d? | 2017-01-08 | 2017-01-10 | 15 | 2600d |  |
| 20 | 1.4 | **Incremento 2: Sistema de ubicación** | 38.5d? | 2017-01-10 | 2017-04-13 | 13 |  |  |
| 21 |  | Configurar proyecto | 0.67d? | 2017-01-10 | 2017-01-10 |  | 2600d |  |
| 22 |  | RF04: Ubicar y orientar dispositivo | 15.5d? | 2017-03-01 | 2017-04-06 | 21 |  | start no earlier than 2017-03-01 |
| 23 |  | RF05: Seleccionar ubicación actual | 0.83d? | 2017-04-06 | 2017-04-09 | 22 |  |  |
| 24 |  | RF06: Listar ubicaciones | 2d? | 2017-04-09 | 2017-04-13 | 23 |  |  |
| 25 | 1.5 | **Incremento3: Subsistema de dibujado** | 13.33d? | 2017-04-13 | 2017-05-14 | 20 |  |  |
| 26 | 1.5.1 | **RF01: Dibujar entorno AR** | 8.5d? | 2017-04-13 | 2017-05-02 |  |  |  |
| 27 |  | RF1.1: Mostrar cámara de fondo | 2.67d? | 2017-04-13 | 2017-04-18 |  |  |  |
| 28 |  | RF1.2: Dibujar espacio virtual | 5.83d? | 2017-04-20 | 2017-05-02 | 27 |  |  |
| 29 |  | RF02: Dibujar obj 3D dinámicos | 3d? | 2017-05-02 | 2017-05-09 | 26 |  |  |
| 30 |  | RF03: Dibujar obj 3D estáticos | 1.83d? | 2017-05-09 | 2017-05-14 | 29 |  |  |
| 31 | 1.6 | **Incremento4: Subsistema obj virtuales** | 8.67d? | 2017-05-14 | 2017-06-04 | 25 |  |  |
| 32 |  | RF11: Configurar obj virt visibles en AR | 2d? | 2017-05-14 | 2017-05-18 |  |  |  |
| 33 |  | RF12: Cargar obj. virt. din. via Web Rest | 4d? | 2017-05-18 | 2017-05-28 | 32 |  |  |
| 34 |  | RF14: Listar objetos virtuales | 1.67d? | 2017-05-28 | 2017-06-01 | 33 |  |  |
| 35 |  | RF15: Eliminar objeto virtual | 1d? | 2017-06-01 | 2017-06-04 | 34 |  |  |
| 36 | 1.7 | **Incremento 5: Ubicacion2, Obj,Virt2.** | 14d? | 2017-06-04 | 2017-07-06 | 31 |  |  |
| 37 |  | RF07: Importar/Exportar ubicación | 4d? | 2017-06-04 | 2017-06-13 |  |  |  |
| 38 |  | RF08: Crear nueva ubicación | 2d? | 2017-06-13 | 2017-06-18 | 37 |  |  |
| 39 |  | RF09: Configurar obj. virt. ubicación | 7.33d? | 2017-06-18 | 2017-07-04 | 38 |  |  |
| 40 |  | RF10: Eliminar ubicación | 0.67d? | 2017-07-04 | 2017-07-06 | 39 |  |  |
| 41 |  | RF13: Cargar objeto virtual estático | 0d? | 2017-07-06 | 2017-07-06 | 40 |  |  |

## Version 2 (saved 2017-05-05)

Note of the change: Actualizar planificadas

Last finish 2017-07-06 → 2017-05-31 (-36d).

Changed:

| ID | Task | Start | Finish | Duration | Total float | Predecessors | Other |
| --- | --- | --- | --- | --- | --- | --- | --- |
| 1 | **Proyecto** |  | 2017-07-06 → 2017-05-31 (-36d) | 89.58d? → 74.25d? | none → 100d |  |  |
| 22 | RF04: Ubicar y orientar dispositivo | 2017-03-01 → 2017-03-02 (+1d) |  |  | none → -11.11d |  |  |
| 25 | **Incremento3: Subsistema de dibujado** |  | 2017-05-14 → 2017-05-17 (+3d) | 13.33d? → 14.67d? | none → 100d |  |  |
| 29 | RF02: Dibujar obj 3D dinámicos | 2017-05-02 → 2017-05-14 (+12d) | 2017-05-09 → 2017-05-14 (+5d) | 3d? → 1d? | none → 100d | 26 → 31 | resources Roi → RoiI |
| 30 | RF03: Dibujar obj 3D estáticos | 2017-05-09 → 2017-05-16 (+7d) | 2017-05-14 → 2017-05-17 (+3d) | 1.83d? → 1d? | none → 100d |  | resources Roi → RoiI |
| 31 | **Incremento4: Subsistema obj virtuales** | 2017-05-14 → 2017-05-02 (-12d) | 2017-06-04 → 2017-05-12 (-23d) | 8.67d? → 3.92d? |  | 25 → 26 |  |
| 32 | RF11: Configurar obj virt visibles en AR | 2017-05-14 → 2017-05-02 (-12d) | 2017-05-18 → 2017-05-07 (-11d) | 2d? → 1d? | none → -11.11d |  |  |
| 33 | RF12: Cargar obj. virt. din. via Web Rest | 2017-05-18 → 2017-05-07 (-11d) | 2017-05-28 → 2017-05-08 (-20d) | 4d? → 1d? |  |  | resources Roi → RoiI |
| 34 | RF14: Listar objetos virtuales | 2017-05-28 → 2017-05-09 (-19d) | 2017-06-01 → 2017-05-10 (-22d) | 1.67d? → 1d? |  |  | resources Roi → RoiI |
| 35 | RF15: Eliminar objeto virtual | 2017-06-01 → 2017-05-11 (-21d) | 2017-06-04 → 2017-05-12 (-23d) |  |  |  | resources Roi → RoiI |
| 36 | **Incremento 5: Ubicacion2, Obj,Virt2.** | 2017-06-04 → 2017-05-21 (-14d) | 2017-07-06 → 2017-05-31 (-36d) | 14d? → 5.25d? | none → 100d | 31 → 25 |  |
| 37 | RF07: Importar/Exportar ubicación | 2017-06-04 → 2017-05-21 (-14d) | 2017-06-13 → 2017-05-21 (-23d) | 4d? → 1d? | none → 100d |  | resources Roi → RoiI |
| 38 | RF08: Crear nueva ubicación | 2017-06-13 → 2017-05-23 (-21d) | 2017-06-18 → 2017-05-24 (-25d) | 2d? → 1d? | none → 100d |  | resources Roi → RoiI |
| 39 | RF09: Configurar obj. virt. ubicación | 2017-06-18 → 2017-05-25 (-24d) | 2017-07-04 → 2017-05-26 (-39d) | 7.33d? → 1d? | none → 200d |  | resources Roi → RoiI |
| 40 | RF10: Eliminar ubicación | 2017-07-04 → 2017-05-28 (-37d) | 2017-07-06 → 2017-05-28 (-39d) | 0.67d? → 1d? | none → 100d |  | resources Roi → RoiI |
| 41 | RF13: Cargar objeto virtual estático | 2017-07-06 → 2017-05-30 (-37d) | 2017-07-06 → 2017-05-31 (-36d) | 0d? → 1d? | none → 100d |  | resources Roi → RoiI |

## Version 3 (saved 2017-06-10)

Note of the change: ActualizaciónMemoria Diseño MPV diagrama clases: vista

Last finish 2017-05-31 → 2017-06-11 (+11d).

Changed:

| ID | Task | Start | Finish | Duration | Total float |
| --- | --- | --- | --- | --- | --- |
| 1 | **Proyecto** |  | 2017-05-31 → 2017-06-11 (+11d) | 74.25d? → 78d? | 100d → none |
| 25 | **Incremento3: Subsistema de dibujado** |  | 2017-05-17 → 2017-05-22 (+5d) | 14.67d? → 16.92d? | 100d → none |
| 29 | RF02: Dibujar obj 3D dinámicos | 2017-05-14 → 2017-05-18 (+4d) | 2017-05-14 → 2017-05-21 (+7d) | 1d? → 3d? | 100d → -100d |
| 30 | RF03: Dibujar obj 3D estáticos | 2017-05-16 → 2017-05-21 (+5d) | 2017-05-17 → 2017-05-22 (+5d) | 1d? → 1.83d? | 100d → none |
| 31 | **Incremento4: Subsistema obj virtuales** |  | 2017-05-12 → 2017-05-17 (+5d) | 3.92d? → 6.17d? | none → -300d |
| 32 | RF11: Configurar obj virt visibles en AR |  |  | 1d? → 2d? | -11.11d → -411.11d |
| 33 | RF12: Cargar obj. virt. din. via Web Rest |  | 2017-05-08 → 2017-05-13 (+5d) | 1d? → 4d? | none → -200d |
| 34 | RF14: Listar objetos virtuales | 2017-05-09 → 2017-05-14 (+5d) | 2017-05-10 → 2017-05-15 (+5d) | 1d? → 1.67d? | none → -300d |
| 35 | RF15: Eliminar objeto virtual | 2017-05-11 → 2017-05-16 (+5d) | 2017-05-12 → 2017-05-17 (+5d) |  | none → -300d |
| 36 | **Incremento 5: Ubicacion2, Obj,Virt2.** | 2017-05-21 → 2017-05-25 (+4d) | 2017-05-31 → 2017-06-11 (+11d) | 5.25d? → 6.75d? | 100d → none |
| 37 | RF07: Importar/Exportar ubicación | 2017-05-21 → 2017-05-25 (+4d) | 2017-05-21 → 2017-05-29 (+8d) | 1d? → 4d? | 100d → none |
| 38 | RF08: Crear nueva ubicación | 2017-05-23 → 2017-05-30 (+7d) | 2017-05-24 → 2017-06-01 (+8d) | 1d? → 2d? | 100d → none |
| 39 | RF09: Configurar obj. virt. ubicación | 2017-05-25 → 2017-06-01 (+7d) | 2017-05-26 → 2017-06-08 (+13d) | 1d? → 7.33d? | 200d → -33.33d |
| 40 | RF10: Eliminar ubicación | 2017-05-28 → 2017-06-08 (+11d) | 2017-05-28 → 2017-06-09 (+12d) | 1d? → 0.67d? | 100d → none |
| 41 | RF13: Cargar objeto virtual estático | 2017-05-30 → 2017-06-11 (+12d) | 2017-05-31 → 2017-06-11 (+11d) | 1d? → 0d? | 100d → none |

## Version 4 (saved 2017-06-20)

Note of the change: ConexionWebRest

Last finish 2017-06-11 → 2017-07-23 (+42d).

Changed:

| ID | Task | Start | Finish | Duration | Total float | Predecessors | Other |
| --- | --- | --- | --- | --- | --- | --- | --- |
| 1 | **Proyecto** |  | 2017-06-11 → 2017-07-23 (+42d) | 78d? → 96.5d? |  |  |  |
| 29 | RF02: Dibujar obj 3D dinámicos |  |  |  | -100d → 1455.56d | 31 → 28 |  |
| 31 | **Incremento4: Subsistema obj virtuales** | 2017-05-02 → 2017-05-25 (+23d) | 2017-05-17 → 2017-06-09 (+23d) | 6.17d? → 6.75d? | -300d → 2466.67d | 26 → 25 |  |
| 32 | RF11: Configurar obj virt visibles en AR | 2017-05-02 → 2017-05-25 (+23d) | 2017-05-07 → 2017-05-28 (+21d) |  | -411.11d → 2211.11d |  |  |
| 33 | RF12: Cargar obj. virt. din. via Web Rest | 2017-05-07 → 2017-06-04 (+28d) | 2017-05-13 → 2017-06-07 (+25d) |  | -200d → 2433.33d | 32 → 34 |  |
| 34 | RF14: Listar objetos virtuales | 2017-05-14 → 2017-06-01 (+18d) | 2017-05-15 → 2017-06-03 (+19d) |  | -300d → 2200d | 33 → 32 |  |
| 35 | RF15: Eliminar objeto virtual | 2017-05-16 → 2017-06-08 (+23d) | 2017-05-17 → 2017-06-09 (+23d) |  | -300d → 2466.67d | 34 → 33 |  |
| 36 | **Incremento 5: Ubicacion2, Obj,Virt2.** | 2017-05-25 → 2017-06-20 (+26d) | 2017-06-11 → 2017-07-23 (+42d) | 6.75d? → 14d? |  |  | constraint none → start no earlier than 2017-06-20 |
| 37 | RF07: Importar/Exportar ubicación | 2017-05-25 → 2017-06-20 (+26d) | 2017-05-29 → 2017-06-29 (+31d) |  |  |  |  |
| 38 | RF08: Crear nueva ubicación | 2017-05-30 → 2017-06-29 (+30d) | 2017-06-01 → 2017-07-02 (+31d) |  |  |  |  |
| 39 | RF09: Configurar obj. virt. ubicación | 2017-06-01 → 2017-07-04 (+33d) | 2017-06-08 → 2017-07-20 (+42d) |  | -33.33d → none |  |  |
| 40 | RF10: Eliminar ubicación | 2017-06-08 → 2017-07-20 (+42d) | 2017-06-09 → 2017-07-23 (+44d) |  |  |  |  |
| 41 | RF13: Cargar objeto virtual estático | 2017-06-11 → 2017-07-23 (+42d) | 2017-06-11 → 2017-07-23 (+42d) |  |  |  |  |

## Version 5 (saved 2017-07-25)

Note of the change: Fix bugs

Last finish 2017-07-23 → 2017-06-22 (-31d).

Added:

| ID | Task | Duration | Start | Finish | Constraint | Resources |
| --- | --- | --- | --- | --- | --- | --- |
| 25 | RF01: Dibujar entorno AR | 7d? | 2017-04-23 | 2017-05-07 | start no earlier than 2017-04-23 | Roi |

Removed: 24 RF06: Listar ubicaciones; 36 Incremento 5: Ubicacion2, Obj,Virt2.; 37 RF07: Importar/Exportar ubicación; 38 RF08: Crear nueva ubicación; 39 RF09: Configurar obj. virt. ubicación; 40 RF10: Eliminar ubicación; 41 RF13: Cargar objeto virtual estático

Changed:

| ID | Task | Start | Finish | Duration | Total float | Predecessors | Other |
| --- | --- | --- | --- | --- | --- | --- | --- |
| 1 | **Proyecto** | 2016-12-06 → 2016-12-08 (+2d) | 2017-07-23 → 2017-06-22 (-31d) | 96.5d? → 82.25d? |  |  |  |
| 2 | **Gestión del proyecto** | 2016-12-06 → 2016-12-08 (+2d) | 2016-12-18 → 2017-06-04 (+168d) | 5.42d? → 73.92d? | 4722.22d → -6177.78d |  |  |
| 3 | Gestión del alcance | 2016-12-06 → 2017-05-21 (+166d) | 2016-12-08 → 2017-05-23 (+166d) | 1.33d? → 0.83d? | 4722.22d → -6300d |  |  |
| 5 | Gestión del tiempo | 2016-12-08 → 2017-05-21 (+164d) | 2016-12-11 → 2017-05-23 (+163d) | 1d? → 0.83d? | 4722.22d → -6177.78d |  |  |
| 6 | Gestión de los costes | 2016-12-11 → 2017-05-23 (+163d) | 2016-12-13 → 2017-05-25 (+163d) | 1d? → 1.33d? | 4722.22d → -6177.78d |  |  |
| 7 | Gestión de la configuración | 2016-12-13 → 2017-05-25 (+163d) | 2016-12-15 → 2017-05-30 (+166d) | 1d? → 1.67d? | 4722.22d → -6177.78d |  |  |
| 8 | Gestion de riesgos | 2016-12-15 → 2017-05-30 (+166d) | 2016-12-18 → 2017-06-04 (+168d) | 1d? → 1.67d? | 4722.22d → -6177.78d |  |  |
| 9 | **Análisis del sistema y requisitos** | 2016-12-11 → 2017-05-23 (+163d) | 2016-12-22 → 2017-06-08 (+168d) | 5d? → 7.33d? | 4722.22d → -6177.78d |  |  |
| 10 | Casos Uso | 2016-12-11 → 2017-05-23 (+163d) | 2016-12-18 → 2017-05-28 (+161d) | 2.67d? → 1.5d? | 5033.33d → -5400d |  | was named Análisis de requisitos |
| 11 | Analisis requisitos | 2016-12-18 → 2017-06-04 (+168d) | 2016-12-20 → 2017-06-04 (+166d) |  | 4722.22d → -6177.78d |  | was named Especificación requisitos |
| 12 | Especificación CU y REQ | 2016-12-20 → 2017-06-04 (+166d) | 2016-12-22 → 2017-06-08 (+168d) | 1d? → 1.67d? | 4722.22d → -6177.78d |  | was named Casos de uso |
| 20 | **Incremento 2: Sistema de ubicación** |  | 2017-04-13 → 2017-02-23 (-49d) | 38.5d? → 19d? | 2122.22d → 3222.22d |  |  |
| 22 | RF04: Ubicar y orientar dispositivo | 2017-03-02 → 2017-01-12 (-49d) | 2017-04-06 → 2017-02-16 (-49d) |  | 2122.22d → 3222.22d |  | constraint start no earlier than 2017-03-01 → none |
| 23 | RF05: Seleccionar despacho | 2017-04-06 → 2017-02-16 (-49d) | 2017-04-09 → 2017-02-23 (-45d) | 0.83d? → 2.83d | 2122.22d → 3222.22d |  | was named RF05: Seleccionar ubicación actual |
| 24 | **Incremento3: Subsistema de dibujado** | 2017-04-13 → 2017-04-23 (+10d) |  | 16.92d? → 13.5d? | 1600d → 100d |  |  |
| 26 | RF02: Dibujar elementos climatización | 2017-04-13 → 2017-05-07 (+24d) | 2017-05-02 → 2017-05-19 (+17d) | 8.5d? → 10d? | 2122.22d → 200d | none → 25 | was named RF01: Dibujar entorno AR; resources none → RoiI; baseline start 2017-05-09 → 2017-05-28; baseline finish 2017-05-28 → 2017-06-04 |
| 27 | RF03: Configurar obj virt visibles en AR | 2017-04-13 → 2017-05-21 (+38d) | 2017-04-18 → 2017-05-22 (+34d) | 2.67d? → 2d? | 2122.22d → 100d | none → 26 | was named RF1.1: Mostrar cámara de fondo; resources Roi → RoiI; baseline start 2017-05-09 → 2017-06-04; baseline finish 2017-05-14 → 2017-06-11 |
| 28 | **Incremento4: Subsistema despachos virtuales** | 2017-04-20 → 2017-05-25 (+35d) | 2017-05-02 → 2017-06-22 (+51d) | 5.83d? → 12.33d? | 2122.22d → none | 27 → 24 | was named RF1.2: Dibujar espacio virtual; resources Roi → none; baseline start 2017-05-16 → 2017-06-11; baseline finish 2017-05-28 → 2017-06-29 |
| 29 | RF06: Editar despacho | 2017-05-18 → 2017-05-25 (+7d) | 2017-05-21 → 2017-06-13 (+23d) | 3d? → 9d? | 1455.56d → none | 28 → none | was named RF02: Dibujar obj 3D dinámicos; resources RoiI → Roi [50%]; baseline start 2017-05-28 → 2017-06-11; baseline finish 2017-06-04 → 2017-06-13 |
| 30 | RF07: Crear despacho | 2017-05-21 → 2017-06-18 (+28d) | 2017-05-22 → 2017-06-22 (+31d) | 1.83d? → 2d? | 1600d → none | 29 → 31 | was named RF03: Dibujar obj 3D estáticos; baseline start 2017-06-04 → 2017-06-13; baseline finish 2017-06-11 → 2017-06-25 |
| 31 | RF08: Eliminar despacho | 2017-05-25 → 2017-06-15 (+21d) | 2017-06-09 → 2017-06-18 (+9d) | 6.75d? → 1.33d? | 2466.67d → none | 24 → 29 | was named Incremento4: Subsistema obj virtuales; resources none → RoiI; baseline start 2017-06-11 → 2017-06-25; baseline finish 2017-06-29 → 2017-06-27 |
| 32 | **Incremento 5: Elementos virtuales** |  | 2017-05-28 → 2017-06-03 (+6d) | 2d? → 3.75d? | 2211.11d → 1144.44d | none → 24 | was named RF11: Configurar obj virt visibles en AR; resources Roi → none; baseline start 2017-06-11 → 2017-06-29; baseline finish 2017-06-13 → 2017-08-01 |
| 33 | RF09: Editar elemento virtual | 2017-06-04 → 2017-05-25 (-10d) | 2017-06-07 → 2017-05-27 (-11d) | 4d? → 2.5d? | 2433.33d → 800d | 34 → none | was named RF12: Cargar obj. virt. din. via Web Rest; baseline start 2017-06-13 → 2017-06-29; baseline finish 2017-06-25 → 2017-07-09 |
| 34 | RF10: Listar elementos virtuales | 2017-06-01 → 2017-05-28 (-4d) | 2017-06-03 → 2017-05-29 (-5d) | 1.67d? → 1.83d? | 2200d → 722.22d | 32 → 33 | was named RF14: Listar objetos virtuales; baseline start 2017-06-25 → 2017-07-09; baseline finish 2017-06-27 → 2017-07-13 |
| 35 | RF11: Actualizar elemento climatizacion WebRest | 2017-06-08 → 2017-05-30 (-9d) | 2017-06-09 → 2017-06-03 (-6d) | 1d? → 4.67d? | 2466.67d → 1144.44d | 33 → 34 | was named RF15: Eliminar objeto virtual; baseline start 2017-06-27 → 2017-07-13; baseline finish 2017-06-29 → 2017-07-30 |
